# PW1 Transistors Week 6

Schedule from MS Project XML, 2026-11-02 to 2026-11-06, 6.5 hours a day.
University of Bath Y2 Project Week

## Calendars

- PW1 Lab Week: Mon-Fri 09:30-12:30, 13:30-17:00; Sat-Sun off.

## Resources

| Resource | Notes |
| --- | --- |
| Stream A Characterisation | Edit member names in ProjectLibre |
| Stream B Gates Adder |  |
| Stream C QMS Docs |  |

## Schedule

| ID | WBS | Task | Type | Duration | Start | Finish | Predecessors | Resources |
| --- | --- | --- | --- | --- | --- | --- | --- | --- |
| 1 | 1 | **CP-A Technical path (Full adder Fri 10:15)** |  |  | 2026-11-02 | 2026-11-06 |  |  |
| 2 | 1.1 | Kit handout 11:15 | milestone | 0.12d | 2026-11-02 | 2026-11-02 |  |  |
| 3 | 1.2 | Logic gates (Stream B) |  | 2d | 2026-11-02 | 2026-11-03 | 2 | Stream B Gates Adder |
| 4 | 1.3 | Half adder (Stream B) |  | 0.69d | 2026-11-04 | 2026-11-04 | 3 | Stream B Gates Adder |
| 5 | 1.4 | Buffer after half adder (1h) |  | 0.15d | 2026-11-04 | 2026-11-04 | 4 |  |
| 6 | 1.5 | Full-adder rehearsal (Stream B+A) |  | 1d | 2026-11-05 | 2026-11-06 | 5 | Stream B Gates Adder; Stream A Characterisation [50%] |
| 7 | 1.6 | Buffer pre-challenge (0.5h) |  | 0.08d | 2026-11-06 | 2026-11-06 | 6 |  |
| 8 | 1.7 | Full-adder challenge 10:15 | milestone | 0.27d | 2026-11-06 | 2026-11-06 | 7 |  |
| 9 | 2 | **CP-B QMS path (Audit Thu 11:15)** |  |  | 2026-11-02 | 2026-11-05 |  |  |
| 10 | 2.1 | QMS setup (Stream C) |  | 2.54d | 2026-11-02 | 2026-11-04 |  | Stream C QMS Docs |
| 11 | 2.2 | Buffer after QMS (1h) |  | 0.15d | 2026-11-04 | 2026-11-04 | 10 |  |
| 12 | 2.3 | Audit prep / 30-second find drill |  | 0.62d | 2026-11-04 | 2026-11-05 | 11 | Stream C QMS Docs |
| 13 | 2.4 | QMS Audit 11:15 | milestone | 0.12d | 2026-11-05 | 2026-11-05 | 12 |  |
| 14 | 3 | **CP-C Communication path (Video Fri 12:00)** |  |  | 2026-11-02 | 2026-11-06 |  |  |
| 15 | 3.1 | Research BJT/MOSFET |  | 1.46d | 2026-11-02 | 2026-11-03 |  | Stream A Characterisation |
| 16 | 3.2 | Team slideshow |  | 2.46d | 2026-11-03 | 2026-11-05 | 15 | Stream C QMS Docs |
| 17 | 3.3 | Individual 3-min video |  | 2.46d | 2026-11-03 | 2026-11-05 | 15 |  |
| 18 | 3.4 | Buffer video/slides (1h Thu PM) |  | 0.15d | 2026-11-05 | 2026-11-05 | 16, 17 |  |
| 19 | 3.5 | Video Moodle submit 12:00 | milestone | 0.08d | 2026-11-06 | 2026-11-06 | 18 |  |
| 20 | 4 | **Parallel / non-critical** |  |  | 2026-11-02 | 2026-11-06 |  |  |
| 21 | 4.1 | I/O characterisation (Stream A) |  | 2d | 2026-11-02 | 2026-11-04 | 2 | Stream A Characterisation |
| 22 | 4.2 | Leadership docs |  | 2.54d | 2026-11-02 | 2026-11-04 |  | Stream C QMS Docs |
| 23 | 4.3 | Circular economy writeup (cut first if late) |  | 2.46d | 2026-11-03 | 2026-11-05 |  | Stream C QMS Docs |
| 24 | 4.4 | Kit return and wrap-up 12:15 | milestone | 0.12d | 2026-11-06 | 2026-11-06 | 8, 19 |  |

Notes:
- 1: Critical path A: Kit → Gates → Half adder → Rehearsal → Challenge
- 2: Hard milestone Mon 11:15 — kit distribution
- 3: CP-A. Build NOT/AND/OR/XOR and verify truth tables.
- 4: CP-A highest technical risk. PERT te≈2.58h focused build + debug.
- 5: Task buffer — absorb delay only, not new scope.
- 6: CP-A. Practise joining with another team's half adder.
- 7: End-of-project buffer before Fri 10:15 challenge.
- 8: Hard milestone Fri 10:15
- 9: Critical path B: QMS setup → Audit prep → Audit
- 10: CP-B. Folder tree, naming procedure, gallery Excel, traceability to verification.
- 11: Task buffer for gallery / naming freeze
- 12: CP-B. Practise retrieving named documents in 30 seconds.
- 13: Hard milestone Thu 11:15
- 14: Critical path C: Research → Slides/Video → Moodle submit
- 15: CP-C. Non-technical explanations for slides and 3-min video.
- 16: CP-C. Non-technical audience presentation.
- 17: CP-C. Finish Thursday evening; Moodle by Fri 12:00.
- 18: End-of-project buffer for editing overrun.
- 19: Hard deadline Fri 12:00 Moodle
- 21: Parallel with gates. BJT/MOSFET curves, ON/OFF, gm.
- 22: Team charter + skills matrix (Team Leadership skill).
- 23: Non-critical — shorten first if CP-A slips.
- 24: Hard milestone Fri 12:15
